# Northwind BI Plan from Kimball by workflows

Schedule from MS Project, 2024-04-01 to 2024-09-19, costs in ₽.

## Calendars

- Standard: Mon-Fri 08:00-12:00, 13:00-17:00; Sat-Sun off.

## Resources

| Resource | Group | Rate | Notes |
| --- | --- | --- | --- |
| Project manager | PMO |  | Coordinates project tasks and schedules and ensures that the project is completed on time and within budget. |
| BI solution architect | BI department | 4900 | Has overall responsibility for the technical design of the data warehousing solution |
| Data modeler | BI department |  | Designs the data warehouse schema and analytical data models |
| Database administrator | DBA team |  | Designs the physical architecture and configuration of the data warehouse database. In addition, database administrators who have responsibility for data sources that are used in the data warehousing solution must be involved in the project to provide access to the data sources that the ETL process uses |
| Infrastructure specialist | Administration team |  | Implements the server and network infrastructure for the data warehousing solution |
| ETL developer | BI department |  | Builds the ETL workflow for the data warehousing solution |
| Report developer | BI department |  | Creates the reporting elements of the BI solution |
| Tester | BI department |  | Verify the business and operational functionality of the solution as it is developed |

## Schedule

| ID | WBS | Task | Type | Duration | Start | Finish | Predecessors | Baseline start | Baseline finish | Baseline duration | Total slack | Free slack | Resources | Work | Cost |
| --- | --- | --- | --- | --- | --- | --- | --- | --- | --- | --- | --- | --- | --- | --- | --- |
| 1 | 1 | **Planning, analyze, design** |  | 69d? | 2024-04-01 | 2024-07-04 |  | 2024-05-09 | 2024-07-05 | 42d? | 0d |  |  | 636h | 176,400 |
| 2 | 1.1 | Project planning |  | 1d | 2024-04-01 | 2024-04-01 |  | 2024-05-09 | 2024-05-15 | 5d? | 0d |  | Project manager; BI solution architect [50%] | 12h | 19,600 |
| 3 | 1.2 | Business requirements definition |  | 22d | 2024-04-02 | 2024-05-01 | 2 | 2024-05-16 | 2024-06-14 | 22d? | 0d |  | Data modeler | 176h |  |
| 4 | 1.3 | Technical architecture design |  | 3d | 2024-05-02 | 2024-05-06 | 3 | 2024-06-17 | 2024-06-17 | 1d? | 78d | 0d | BI solution architect | 24h | 117,600 |
| 5 | 1.4 | Planning software |  | 1d | 2024-05-07 | 2024-05-07 | 4 | 2024-06-18 | 2024-06-18 | 1d? | 78d | 0d | Database administrator [50%]; Infrastructure specialist [50%]; BI solution architect | 16h | 39,200 |
| 6 | 1.5 | Dimensional modelling |  | 33d | 2024-05-02 | 2024-06-17 | 3 | 2024-06-17 | 2024-06-18 | 2d? | 0d |  | Data modeler | 264h |  |
| 7 | 1.6 | BI application design |  | 5d | 2024-05-02 | 2024-05-08 | 3 | 2024-06-17 | 2024-06-21 | 5d? | 41d | 0d | Report developer | 40h |  |
| 8 | 1.7 | Physical design |  | 3d? | 2024-06-18 | 2024-06-20 | 6 | 2024-06-19 | 2024-06-21 | 3d? | 0d |  | Database administrator | 24h |  |
| 9 | 1.8 | ETL design |  | 10d? | 2024-06-21 | 2024-07-04 | 8 | 2024-06-24 | 2024-07-05 | 10d? | 0d |  | ETL developer | 80h |  |
| 10 | 2 | **Development** |  | 82d? | 2024-05-08 | 2024-08-29 |  | 2024-06-19 | 2024-08-30 | 53d? | 0d |  |  | 704h |  |
| 11 | 2.1 | Resources & software installation |  | 4d? | 2024-05-08 | 2024-05-13 | 5 | 2024-06-19 | 2024-06-24 | 4d? | 78d |  | Infrastructure specialist; Database administrator | 64h |  |
| 12 | 2.2 | ETL development |  | 40d? | 2024-07-05 | 2024-08-29 | 9 | 2024-07-08 | 2024-08-30 | 40d? | 0d |  | ETL developer | 320h |  |
| 13 | 2.3 | BI application development |  | 40d? | 2024-05-09 | 2024-07-03 | 7 | 2024-06-24 | 2024-08-16 | 40d? | 41d |  | Report developer | 320h |  |
| 14 | 3 | Deployment |  | 5d? | 2024-08-30 | 2024-09-05 | 13, 11, 12 | 2024-09-02 | 2024-09-06 | 5d? | 0d |  | BI solution architect | 40h | 196,000 |
| 15 | 4 | Testing |  | 10d | 2024-09-06 | 2024-09-19 | 14 | 2024-09-09 | 2024-09-20 | 10d | 0d |  | Tester | 80h |  |
| 16 | 5 | RELEASE 1 | milestone | 0d | 2024-09-19 | 2024-09-19 | 15 | 2024-09-20 | 2024-09-20 | 0d | 0d |  | BI solution architect |  |  |
